# WBS-20200722-Revise

Schedule from MS Project, 2020-01-21 to 2020-09-04, A marks actual dates.

## Calendars

- Standard: Mon-Fri 08:00-12:00, 13:00-17:00; Sat-Sun off.

## Resources

| Resource |
| --- |
| Hatanaka |
| Tor |
| Eak |
| Nut |
| 20 |
| 21 |
| 22 |
| 26 |
| Rut |
| TIS |
| MFEC |
| Yosuke |

## Schedule

| ID | WBS | Task | Type | Duration | Start | Finish | Predecessors | Complete | Remaining | Actual finish | Total slack | Resources | Work | Actual work | Deliverable | Code |
| --- | --- | --- | --- | --- | --- | --- | --- | --- | --- | --- | --- | --- | --- | --- | --- | --- |
| 1 | 1 | **Project Planning** |  | 1d? | 2020-03-04 | 2020-03-04 |  |  |  |  | 0d |  |  |  |  |  |
| 2 | 1.1 | **High Level System Design** |  | 1d? | 2020-03-04 | 2020-03-04 |  |  |  |  | 0d |  |  |  | High Level System Design |  |
| 3 | 1.1.1 | Application Design | manual | 1d | 2020-03-04 | 2020-03-04 |  |  |  |  |  |  |  |  | High Level System Design | PP-001 |
| 4 | 1.1.2 | Cloud/Infra Design | manual | 1d? | 2020-03-04 | 2020-03-04 |  |  |  |  |  |  |  |  |  | PP-002 |
| 5 | 1.2 | **Create PJ Plan Document** |  | 1d | 2020-03-04 | 2020-03-04 |  |  |  |  | 0d |  |  |  | Create PJ Plan Document |  |
| 6 | 1.2.1 | Project Overview（Objective・Goal） | manual | 1d | 2020-03-04 | 2020-03-04 |  |  |  |  |  |  |  |  | Create Plan Document | PP-003 |
| 7 | 1.2.2 | Scope | manual | 1d | 2020-03-04 | 2020-03-04 |  |  |  |  |  |  |  |  | Create Plan Document | PP-004 |
| 8 | 1.2.3 | Cost | manual | 1d | 2020-03-04 | 2020-03-04 |  |  |  |  |  |  |  |  | Create Plan Document | PP-005 |
| 9 | 1.2.4 | Schedule | manual | 1d | 2020-03-04 | 2020-03-04 |  |  |  |  |  |  |  |  | Create Plan Document | PP-006 |
| 10 | 1.2.5 | Project Structure | manual | 1d | 2020-03-04 | 2020-03-04 |  |  |  |  |  |  |  |  | Create Plan Document | PP-007 |
| 11 | 1.2.6 | Quality Management | manual | 1d | 2020-03-04 | 2020-03-04 |  |  |  |  |  |  |  |  | Create Plan Document | PP-008 |
| 12 | 1.2.7 | Communication Plan | manual | 1d | 2020-03-04 | 2020-03-04 |  |  |  |  |  |  |  |  | Create Plan Document | PP-009 |
| 13 | 1.2.8 | Risk Management | manual | 1d | 2020-03-04 | 2020-03-04 |  |  |  |  |  |  |  |  | PJ Plan Document Review | PP-010 |
| 14 | 1.3 | **PJ Plan Document Review** |  | 1d? | 2020-03-04 | 2020-03-04 |  |  |  |  | 0d |  |  |  |  |  |
| 15 | 1.3.1 | Review Sheet | manual | 1d? | 2020-03-04 | 2020-03-04 |  |  |  |  |  |  |  |  |  | PP-011 |
| 16 | 2 | **Technical Investigation** |  | 62d? | 2020-01-21 A | 2020-04-15 |  | 83% | 10.33d? |  | 0d |  | 1264h | 1032h |  |  |
| 17 | 2.1 | **Knowledge Sharing** |  | 12d | 2020-01-21 A | 2020-02-05 A |  | 100% |  |  |  |  | 24h | 24h |  | TI-001 |
| 18 | 2.1.1 | Discuss Realization Method of SCORELINK SaaS | milestone, manual | 0d | 2020-01-21 A | 2020-01-21 A |  | 100% |  |  |  | Hatanaka; Tor; Eak |  |  |  | TI-002 |
| 19 | 2.1.2 | SL Technical Session | manual | 1d | 2020-02-05 A | 2020-02-05 A |  | 100% |  |  |  | Eak; Hatanaka; Tor | 24h | 24h | Source coe v3 |  |
| 20 | 2.2 | **Compiling code and analysis code** |  | 7d | 2020-03-16 A | 2020-03-24 A |  | 100% |  |  |  |  |  |  |  |  |
| 21 | 2.2.1 | Compile Code | manual | 4d | 2020-03-16 A | 2020-03-19 A |  | 100% |  |  |  |  |  |  |  |  |
| 22 | 2.2.2 | Analysis Code | manual | 4d | 2020-03-19 A | 2020-03-24 A |  | 100% |  |  |  |  |  |  |  |  |
| 23 | 2.3 | **Front-End Investigation** |  | 23d | 2020-03-16 A | 2020-04-15 A |  | 100% |  |  |  |  | 608h | 608h |  |  |
| 24 | 2.3.1 | **Display Tiff Image (Alternative of Leadtools)** |  | 13d | 2020-03-16 A | 2020-04-01 |  | 100% |  | 2020-03-23 |  | Tor | 160h | 160h | example code image viewer | TI-005 |
| 25 | 2.3.1.1 | **Development POC** |  | 13d | 2020-03-16 A | 2020-04-01 |  | 100% |  | 2020-03-23 |  |  | 48h | 48h |  |  |
| 26 | 2.3.1.1.1 | View image | manual | 2d | 2020-03-16 A | 2020-03-17 A |  | 100% |  |  |  | Tor | 16h | 16h | Verify with existing library |  |
| 27 | 2.3.1.1.2 | Zoom | manual | 2d | 2020-03-18 A | 2020-03-19 A | 26 | 100% |  |  |  | Tor | 16h | 16h |  |  |
| 28 | 2.3.1.1.3 | Rotate Page | manual | 2d | 2020-03-20 A | 2020-03-23 A | 27 | 100% |  |  |  | Tor | 16h | 16h |  |  |
| 29 | 2.3.1.2 | Check 3rd Party Cost | manual | 1d | 2020-03-16 A | 2020-03-16 A |  | 100% |  |  |  | Tor | 8h | 8h | Price list Developer |  |

| ID | WBS | Task | Type | Duration | Start | Finish | Predecessors | Complete | Remaining | Actual start | Total slack | Constraint | Resources | Work | Actual work | Deliverable | Code | Comment |
| --- | --- | --- | --- | --- | --- | --- | --- | --- | --- | --- | --- | --- | --- | --- | --- | --- | --- | --- |
| 30 | 2.3.2 | **Range Specification (Replace VB Power Pack)** |  | 22d | 2020-03-17 A | 2020-04-15 A |  | 100% |  |  |  |  | Eak | 448h | 448h | example code for select pattern | TI-006 |  |
| 31 | 2.3.2.1 | **Development POC (Jquery)** |  | 22d | 2020-03-17 A | 2020-04-15 A |  | 100% |  |  |  |  | Eak | 272h | 272h |  |  |  |
| 32 | 2.3.2.1.1 | Reseach JQuery | manual | 7d | 2020-03-17 A | 2020-03-25 A |  | 100% |  |  |  |  | Eak | 56h | 56h |  |  |  |
| 33 | 2.3.2.1.2 | Crop Image |  | 2d | 2020-04-01 A | 2020-04-02 A |  | 100% |  |  |  | finish no earlier than 2020-04-01 | Eak | 16h | 16h | Save only one image |  | จะกลับมาสรุปว่า เซฟได้ไหม |
| 34 | 2.3.2.1.3 | Save Crop Area |  | 3d | 2020-04-13 A | 2020-04-15 A | 33 | 100% |  |  |  | finish no earlier than 2020-04-15 | Eak | 24h | 24h | Save Jpeg or Tiff |  |  |
| 35 | 2.4 | **Back-End Investigation** |  | 18d? | 2020-03-23 A | 2020-04-15 A |  | 100% |  |  |  |  |  | 320h | 320h |  |  |  |
| 36 | 2.4.1 | **Spread Sheet** |  | 18d? | 2020-03-23 A | 2020-04-15 A |  | 100% |  |  |  |  | Rut | 320h | 320h | example code for excel format | TI-007 |  |
| 37 | 2.4.1.1 | **Development POC** |  | 11d? | 2020-04-01 | 2020-04-15 A |  | 100% |  | 2020-03-23 |  |  | Rut | 176h | 176h |  |  |  |
| 38 | 2.4.1.1.1 | Reseach and develop | manual | 3d | 2020-03-23 A | 2020-03-25 A |  | 100% |  |  |  |  |  |  |  |  |  |  |
| 39 | 2.4.1.1.2 | Display OCR Result |  | 8d | 2020-03-25 A | 2020-04-03 A |  | 100% |  |  |  | finish no earlier than 2020-04-03 | Rut | 64h | 64h |  |  |  |
| 40 | 2.4.1.1.3 | Modify Value |  | 3d? | 2020-04-13 A | 2020-04-15 A |  | 100% |  |  |  |  | Rut | 24h | 24h |  |  |  |
| 41 | 2.4.1.1.4 | Merge Cell | manual | 3d | 2020-04-13 A | 2020-04-15 A |  | 100% |  |  |  |  |  |  |  |  |  |  |
| 42 | 2.5 | **Integration With Existing Scorelink Module** |  | 10d | 2020-03-23 A | 2020-04-03 |  | 50% | 5d |  | 0d |  |  | 288h | 72h |  |  |  |
| 43 | 2.5.1 | Create solution diagram | manual | 9d | 2020-03-23 A | 2020-04-02 A |  | 100% |  |  |  |  | Tor | 72h | 72h | Solution Diagram For Send To TIS |  |  |
| 44 | 2.5.2 | Discuss with TIS to confirm | manual | 9d | 2020-03-24 A | 2020-04-03 |  |  | 9d |  |  |  | Tor; Eak; TIS | 216h |  |  |  |  |
| 45 | 2.6 | **Cloud Infra struture** |  | 2d | 2020-03-23 A | 2020-03-24 |  | 33% | 1.33d |  | 0d |  |  | 24h | 8h |  |  |  |
| 46 | 2.6.1 | Azure Cloud Infra Structure | manual | 1d | 2020-03-23 A | 2020-03-23 A |  | 100% |  |  |  |  | Tor | 8h | 8h |  |  |  |
| 47 | 2.6.2 | Compare Cloud Infrastructure | manual | 2d | 2020-03-23 | 2020-03-24 |  |  |  |  |  |  | Yosuke | 16h |  |  |  |  |
| 48 | 3 | **Requirement Definition** |  | 10d | 2020-04-01 | 2020-04-14 |  |  |  |  |  |  |  |  |  |  |  |  |
| 49 | 3.1 | **Business Requirement** |  | 10d | 2020-04-01 | 2020-04-14 |  |  |  |  |  |  |  |  |  |  |  |  |
| 50 | 3.1.1 | Business Flow | manual | 1d | 2020-04-01 | 2020-04-01 |  |  |  |  |  |  |  |  |  |  | RD-001 |  |
| 51 | 3.1.2 | Use Case Diagram | manual | 1d? | 2020-04-01 | 2020-04-01 |  |  |  |  |  |  |  |  |  |  | RD-002 |  |
| 52 | 3.2 | **Functional Requirement** |  | 8d | 2020-04-03 | 2020-04-14 |  |  |  |  |  |  |  |  |  |  |  |  |
| 53 | 3.2.1 | System Overview Diagram | manual | 1d? | 2020-04-03 | 2020-04-03 |  |  |  |  |  |  |  |  |  |  | RD-003 |  |
| 54 | 3.2.2 | Functions List | manual | 1d | 2020-04-03 | 2020-04-03 |  |  |  |  |  |  |  |  |  |  | RD-004 |  |
| 55 | 3.2.3 | Functional Overview | manual | 1d | 2020-04-03 | 2020-04-03 |  |  |  |  |  |  |  |  |  |  | RD-005 |  |

| ID | WBS | Task | Type | Duration | Start | Finish | Total slack | Resources | Code |
| --- | --- | --- | --- | --- | --- | --- | --- | --- | --- |
| 56 | 3.3 | **Non-Functional Requirement** |  | 2d | 2020-04-13 | 2020-04-14 |  |  |  |
| 57 | 3.3.1 | Quality and Performance Requirements | manual | 1d? | 2020-04-13 | 2020-04-13 |  |  | RD-007 |
| 58 | 3.3.2 | Security Requirement | manual | 1d | 2020-04-13 | 2020-04-13 |  |  | RD-008 |
| 59 | 3.3.3 | Operational Requirements | manual | 1d | 2020-04-13 | 2020-04-13 |  |  | RD-009 |
| 60 | 3.4 | **Completion Judgment Review** |  | 0d | 2020-04-14 | 2020-04-14 |  |  | RD-010 |
| 61 | 3.4.1 | Review Sheet | milestone, manual | 0d | 2020-04-14 | 2020-04-14 |  | TIS; MFEC |  |
| 62 | 4 | **Functional Design (External Design)** |  | 66d? | 2020-03-04 | 2020-06-03 | 0d |  |  |
| 63 | 4.1 | **System Architectural Design** |  | 1d? | 2020-03-04 | 2020-03-04 | 132d |  |  |
| 64 | 4.1.1 | Hardware Configuration Diagram |  | 1d? | 2020-03-04 | 2020-03-04 | 132d |  | FD-001 |
| 65 | 4.1.2 | Software Configuration Diagram |  | 1d? | 2020-03-04 | 2020-03-04 | 132d |  | FD-002 |
| 66 | 4.1.3 | Network Configuration Diagram |  | 1d? | 2020-03-04 | 2020-03-04 | 132d |  | FD-003 |
| 67 | 4.1.4 | Application Function Design |  | 1d? | 2020-03-04 | 2020-03-04 | 132d |  | FD-005 |
| 68 | 4.1.5 | **Design Document Review** |  | 1d? | 2020-03-04 | 2020-03-04 | 132d |  |  |
| 69 | 4.1.5.1 | Review Sheet |  | 1d? | 2020-03-04 | 2020-03-04 | 132d |  | FD-006 |
| 70 | 4.2 | **Application Functional Design** |  | 1d? | 2020-04-17 | 2020-04-17 |  |  |  |
| 71 | 4.2.1 | **Screen Design** |  | 1d | 2020-04-17 | 2020-04-17 |  |  |  |
| 72 | 4.2.1.1 | **Front End** |  | 1d? | 2020-04-17 | 2020-04-17 | 0d |  |  |
| 73 | 4.2.1.1.1 | **Scorelink Front** |  | 1d? | 2020-04-17 | 2020-04-17 | 0d |  |  |
| 74 | 4.2.1.1.1.1 | ScoreLink Main Menu | manual | 1d? | 2020-04-17 | 2020-04-17 |  |  |  |
| 75 | 4.2.1.1.1.2 | Brown FS file(Main-Page) | manual | 1d? | 2020-04-17 | 2020-04-17 |  |  |  |
| 76 | 4.2.1.1.1.3 | FS Selection Page (Main-Page) | manual | 1d? | 2020-04-17 | 2020-04-17 |  |  |  |
| 77 | 4.2.1.1.1.4 | List Selected Page (Sub-Page) | manual | 1d? | 2020-04-17 | 2020-04-17 |  |  |  |
| 78 | 4.2.1.1.1.5 | Drag and Drop Note Tile (Pop-up) | manual | 1d? | 2020-04-17 | 2020-04-17 |  |  |  |
| 79 | 4.2.1.1.2 | **Home Page** |  | 1d? | 2020-04-17 | 2020-04-17 | 0d |  |  |
| 80 | 4.2.1.1.2.1 | Header | manual | 1d? | 2020-04-17 | 2020-04-17 |  |  |  |
| 81 | 4.2.1.1.2.2 | Sidebar | manual | 1d? | 2020-04-17 | 2020-04-17 |  |  |  |
| 82 | 4.2.1.1.2.3 | Footer | manual | 1d? | 2020-04-17 | 2020-04-17 |  |  |  |
| 83 | 4.2.1.1.2.4 | Layout | manual | 1d? | 2020-04-17 | 2020-04-17 |  |  |  |
| 84 | 4.2.1.1.3 | Register Page |  | 1d | 2020-04-17 | 2020-04-17 | 0d |  |  |
| 85 | 4.2.1.1.4 | Login Page |  | 1d | 2020-04-17 | 2020-04-17 | 0d |  |  |

| ID | WBS | Task | Type | Duration | Start | Finish | Total slack | Code | Deliverable |
| --- | --- | --- | --- | --- | --- | --- | --- | --- | --- |
| 86 | 4.2.1.1.5 | **Forgot Password** |  | 1d? | 2020-04-17 | 2020-04-17 | 0d |  |  |
| 87 | 4.2.1.1.5.1 | Mail Reset Password | manual | 1d? | 2020-04-17 | 2020-04-17 |  |  |  |
| 88 | 4.2.1.1.6 | **User Profile Page** |  | 1d? | 2020-04-17 | 2020-04-17 | 0d |  |  |
| 89 | 4.2.1.1.6.1 | Edit User Profile | manual | 1d? | 2020-04-17 | 2020-04-17 |  |  |  |
| 90 | 4.2.1.1.7 | **Subscription Plan Page** |  | 1d? | 2020-04-17 | 2020-04-17 | 0d |  |  |
| 91 | 4.2.1.1.7.1 | Payment Gateway | manual | 1d? | 2020-04-17 | 2020-04-17 |  |  |  |
| 92 | 4.2.1.2 | **Back End (Admin)** |  | 1d | 2020-04-17 | 2020-04-17 |  |  |  |
| 93 | 4.2.1.2.1 | **User Profile List** |  | 1d | 2020-04-17 | 2020-04-17 |  |  |  |
| 94 | 4.2.1.2.1.1 | Edit User Profile | manual | 1d | 2020-04-17 | 2020-04-17 |  |  |  |
| 95 | 4.2.1.2.1.2 | Renew Subscription | manual | 1d | 2020-04-17 | 2020-04-17 |  |  |  |
| 96 | 4.2.2 | Screen Action Definition |  | 1d | 2020-04-17 | 2020-04-17 | 0d | FD-011 |  |
| 97 | 4.2.3 | **Report/Form Design** |  | 1d? | 2020-04-17 | 2020-04-17 | 0d |  |  |
| 98 | 4.2.3.1 | Report/Form List | manual | 1d | 2020-04-17 | 2020-04-17 |  | FD-012 | Report/Form Design |
| 99 | 4.2.3.2 | Report/Form Overview | manual | 1d | 2020-04-17 | 2020-04-17 |  | FD-013 | Table/File Design |
| 100 | 4.2.3.3 | Report/Form Layout | manual | 1d? | 2020-04-17 | 2020-04-17 |  | FD-014 |  |
| 101 | 4.2.3.4 | Report/Form Output Item Definition | manual | 1d | 2020-04-17 | 2020-04-17 |  | FD-018 | Table/File Design |
| 102 | 4.2.4 | **Table/File Design** |  | 1d? | 2020-04-17 | 2020-04-17 | 0d |  |  |
| 103 | 4.2.4.1 | Table/File List | manual | 1d | 2020-04-17 | 2020-04-17 |  | FD-019 | Table/File Design |
| 104 | 4.2.4.2 | Table/File Item Definition | manual | 1d? | 2020-04-17 | 2020-04-17 |  | FD-021 |  |
| 105 | 4.2.4.3 | CRUD Diagram | manual | 1d | 2020-04-17 | 2020-04-17 |  | FD-022 | External Interface Design |
| 106 | 4.2.5 | **External Interface Design** |  | 1d? | 2020-04-17 | 2020-04-17 | 0d |  |  |
| 107 | 4.2.5.1 | External Interfaces List | manual | 1d? | 2020-04-17 | 2020-04-17 |  | FD-023 |  |
| 108 | 4.2.5.2 | External Interface Item Definition | manual | 1d | 2020-04-17 | 2020-04-17 |  | FD-024 | Design Document Review |
| 109 | 4.2.5.3 | External Interface Processing Overview | manual | 1d | 2020-04-17 | 2020-04-17 |  | FD-025 | Performance Design |

| ID | WBS | Task | Type | Duration | Start | Finish | Predecessors | Complete | Remaining | Actual start | Total slack | Work | Actual work | Code |
| --- | --- | --- | --- | --- | --- | --- | --- | --- | --- | --- | --- | --- | --- | --- |
| 110 | 4.2.6 | **Design Document Review** |  | 1d? | 2020-04-17 | 2020-04-17 |  |  |  |  | 0d |  |  |  |
| 111 | 4.2.6.1 | Review Report | manual | 1d? | 2020-04-17 | 2020-04-17 |  |  |  |  |  |  |  | FD-026 |
| 112 | 4.3 | **Non-functional Requirement Design** |  | 1d? | 2020-03-04 | 2020-03-04 |  |  |  |  | 0d |  |  |  |
| 113 | 4.3.1 | Performance Design | manual | 1d | 2020-03-04 | 2020-03-04 |  |  |  |  |  |  |  |  |
| 114 | 4.3.2 | Scalability Design | manual | 1d? | 2020-03-04 | 2020-03-04 |  |  |  |  |  |  |  |  |
| 115 | 4.3.3 | Security Design | manual | 1d | 2020-03-04 | 2020-03-04 |  |  |  |  |  |  |  | FD-028 |
| 116 | 4.3.4 | Consider Operation and Maintenance Policy | manual | 1d | 2020-03-04 | 2020-03-04 |  |  |  |  |  |  |  | FD-029 |
| 117 | 4.3.5 | Consider Test Policy | manual | 1d | 2020-03-04 | 2020-03-04 |  |  |  |  |  |  |  | FD-030 |
| 118 | 4.3.6 | **Design Document Review** |  | 1d | 2020-03-04 | 2020-03-04 |  |  |  |  | 0d |  |  | FD-031 |
| 119 | 4.3.6.1 | Review Report | manual | 1d | 2020-03-04 | 2020-03-04 |  |  |  |  |  |  |  | FD-032 |
| 120 | 4.4 | Completion Judgment Review | manual | 1d | 2020-06-03 | 2020-06-03 | 70, 112, 118 |  |  |  |  |  |  | FD-034 |
| 121 | 5 | **Technical Design (Internal Design)** |  | 12d | 2020-05-01 | 2020-05-18 |  | 36% | 7.71d | 2020-04-16 |  | 328h | 80.8h |  |
| 122 | 5.1 | **Development Readiness Check** |  | 5d | 2020-04-16 A | 2020-04-22 |  | 83% | 0.83d |  | 0d |  |  |  |
| 123 | 5.1.1 | Source Control | manual | 1d | 2020-04-17 A | 2020-04-17 A |  | 100% |  |  |  |  |  |  |
| 124 | 5.1.2 | **Component Readiness** |  | 4d | 2020-04-17 | 2020-04-22 |  | 80% | 0.8d | 2020-04-16 |  |  |  |  |
| 125 | 5.1.2.1 | Leadtools PDF Pro Trial | manual | 2d | 2020-04-20 A | 2020-04-21 A |  | 100% |  |  |  |  |  |  |
| 126 | 5.1.2.2 | Jquery (Image Cropper) | manual | 1d | 2020-04-16 A | 2020-04-16 A |  | 100% |  |  |  |  |  |  |
| 127 | 5.1.2.3 | Spread Sheet Control | manual | 1d | 2020-04-16 A | 2020-04-16 A |  | 100% |  |  |  |  |  |  |
| 128 | 5.1.2.4 | ABBY Fineread | manual | 1d | 2020-04-16 | 2020-04-16 |  |  |  |  |  |  |  |  |
| 129 | 5.2 | **Subscription System** |  | 1d | 2020-05-01 | 2020-05-01 |  |  |  |  |  |  |  |  |
| 130 | 5.2.1 | Design Flow | manual | 1d | 2020-05-01 | 2020-05-01 |  |  |  |  |  |  |  | TD-001 |
| 131 | 5.2.2 | **Front End** |  | 1d? | 2020-05-01 | 2020-05-01 |  |  |  |  | 0d |  |  | TD-002 |
| 132 | 5.2.2.1 | **Home Page** |  | 1d? | 2020-05-01 | 2020-05-01 |  |  |  |  | 0d |  |  | TD-003 |
| 133 | 5.2.2.1.1 | Header | manual | 1d? | 2020-05-01 | 2020-05-01 |  |  |  |  |  |  |  | TD-004 |
| 134 | 5.2.2.1.2 | Sidebar | manual | 1d? | 2020-05-01 | 2020-05-01 |  |  |  |  |  |  |  |  |
| 135 | 5.2.2.1.3 | Footer | manual | 1d? | 2020-05-01 | 2020-05-01 |  |  |  |  |  |  |  |  |
| 136 | 5.2.2.1.4 | Layout | manual | 1d? | 2020-05-01 | 2020-05-01 |  |  |  |  |  |  |  |  |
| 137 | 5.2.2.1.5 | Confirm Popup | manual | 1d? | 2020-05-01 | 2020-05-01 |  |  |  |  |  |  |  |  |
| 138 | 5.2.2.1.6 | Alert Popup | manual | 1d? | 2020-05-01 | 2020-05-01 |  |  |  |  |  |  |  |  |
| 139 | 5.2.2.2 | Register Page | manual | 1d | 2020-05-01 | 2020-05-01 |  |  |  |  |  |  |  | TD-005 |
| 140 | 5.2.2.3 | Login Page | manual | 1d? | 2020-05-01 | 2020-05-01 |  |  |  |  |  |  |  |  |

| ID | WBS | Task | Type | Duration | Start | Finish | Predecessors | Complete | Remaining | Actual start | Total slack | Resources | Work | Actual work | Deliverable | Code |
| --- | --- | --- | --- | --- | --- | --- | --- | --- | --- | --- | --- | --- | --- | --- | --- | --- |
| 141 | 5.2.2.4 | **Forgot Password** |  | 1d? | 2020-05-01 | 2020-05-01 |  |  |  |  | 0d |  |  |  |  |  |
| 142 | 5.2.2.4.1 | Mail Reset Password | manual | 1d? | 2020-05-01 | 2020-05-01 |  |  |  |  |  |  |  |  |  |  |
| 143 | 5.2.2.5 | **User Profile Page** |  | 1d? | 2020-05-01 | 2020-05-01 |  |  |  |  | 0d |  |  |  |  |  |
| 144 | 5.2.2.5.1 | Edit User Profile | manual | 1d? | 2020-05-01 | 2020-05-01 |  |  |  |  |  |  |  |  |  |  |
| 145 | 5.2.2.6 | **Subscription Plan Page** |  | 1d | 2020-05-01 | 2020-05-01 |  |  |  |  | 0d |  |  |  | Prototype-Subscripton Page | TD-006 |
| 146 | 5.2.2.6.1 | Payment Gateway | manual | 1d | 2020-05-01 | 2020-05-01 |  |  |  |  |  |  |  |  | Prototype-Edit Profile (Admin) | TD-007 |
| 147 | 5.2.3 | **Back End (Admin)** |  | 1d? | 2020-05-01 | 2020-05-01 |  |  |  |  | 0d |  |  |  |  | TD-008 |
| 148 | 5.2.3.1 | **User Profile List** |  | 1d? | 2020-05-01 | 2020-05-01 |  |  |  |  | 0d |  |  |  |  |  |
| 149 | 5.2.3.1.1 | Edit User Profile | manual | 1d? | 2020-05-01 | 2020-05-01 |  |  |  |  |  |  |  |  |  |  |
| 150 | 5.2.3.1.2 | Renew Subscription | manual | 1d? | 2020-05-01 | 2020-05-01 |  |  |  |  |  |  |  |  |  |  |
| 151 | 5.3 | **Scorelink Frontend** |  | 7d | 2020-04-22 A | 2020-04-30 |  | 68% | 2.23d |  |  |  | 184h | 52h |  |  |
| 152 | 5.3.1 | **Frontend Architecture design** |  | 7d | 2020-04-22 A | 2020-04-30 |  | 68% | 2.23d |  |  |  | 184h | 52h |  |  |
| 153 | 5.3.1.1 | Scorelink Mainmenu | manual | 1d | 2020-04-22 A | 2020-04-22 A |  | 100% |  |  |  |  |  |  |  |  |
| 154 | 5.3.1.2 | **Digitize Step** |  | 5d | 2020-04-22 A | 2020-04-28 |  | 79% | 1.07d |  |  | Eak | 144h | 44h |  |  |
| 155 | 5.3.1.2.1 | Browns and Upload | manual | 1d | 2020-04-22 A | 2020-04-22 A |  | 100% |  |  |  | Eak | 8h | 8h |  | TD-011 |
| 156 | 5.3.1.2.2 | **FS Page Selected(Viewer Page)** |  | 3d | 2020-04-22 | 2020-04-24 |  | 75% | 0.75d | 2020-04-23 |  | Eak | 72h | 24h |  | TD-012 |
| 157 | 5.3.1.2.2.1 | Drag and Drop Note Tile | manual | 1d | 2020-04-23 | 2020-04-23 | 24 |  |  |  |  | Eak | 8h |  |  |  |
| 158 | 5.3.1.2.2.2 | **List of Selected Page** |  | 2d | 2020-04-23 A | 2020-04-24 |  | 99% | 0d |  |  | Eak | 40h | 24h |  |  |
| 159 | 5.3.1.2.2.2.1 | Scan Selected Page (OCR) | manual | 1d | 2020-04-23 A | 2020-04-23 A |  | 100% |  |  |  | Eak | 8h | 8h |  |  |
| 160 | 5.3.1.2.2.2.2 | View and Edit Result (Pop-up) | manual | 2d | 2020-04-23 A | 2020-04-24 A | 36 | 100% |  |  |  | Eak | 16h | 16h |  |  |
| 161 | 5.3.1.2.3 | **Select Scan Patern(Range Specific)** |  | 1d | 2020-04-27 A | 2020-04-27 |  | 75% | 0.25d |  |  | Eak | 24h | 12h |  | TD-013 |
| 162 | 5.3.1.2.3.1 | Draw Selection Area | manual | 1d | 2020-04-27 A | 2020-04-27 A | 30 | 100% |  |  |  | Eak | 8h | 8h |  |  |
| 163 | 5.3.1.2.3.2 | Scan (Backgroud Process ) | manual | 1d | 2020-04-27 A | 2020-04-27 |  | 50% | 0.5d |  |  | Eak | 8h | 4h |  |  |
| 164 | 5.3.1.3 | **Digitize Excel Import** |  | 2d | 2020-04-27 A | 2020-04-28 |  | 33% | 1.33d |  |  | Rut | 40h | 8h |  |  |
| 165 | 5.3.1.3.1 | Edit FS data | manual | 1d | 2020-04-27 A | 2020-04-27 A |  | 100% |  |  |  | Rut | 8h | 8h |  | TD-014 |
| 166 | 5.3.1.3.2 | Browns Standardize Data | manual | 1d | 2020-04-28 | 2020-04-28 |  |  |  |  |  | Rut | 8h |  |  | TD-015 |
| 167 | 5.3.1.3.3 | Create FS and Export | manual | 1d | 2020-04-28 | 2020-04-28 |  |  |  |  |  | Rut | 8h |  |  | TD-016 |
| 168 | 5.4 | ScoreLink DB Design | manual | 2d | 2020-04-24 A | 2020-04-27 |  | 90% | 0.2d |  |  | Eak; Rut | 32h | 28.8h |  |  |

| ID | WBS | Task | Type | Duration | Start | Finish | Predecessors | Complete | Remaining | Total slack | Resources | Work | Actual work | Code |
| --- | --- | --- | --- | --- | --- | --- | --- | --- | --- | --- | --- | --- | --- | --- |
| 169 | 5.5 | **Scorelink Backend** |  | 1d | 2020-05-01 | 2020-05-01 |  |  |  |  |  | 112h |  |  |
| 170 | 5.5.1 | **Backend Architecture design** |  | 3d | 2020-04-29 | 2020-05-01 |  |  |  |  |  | 112h |  |  |
| 171 | 5.5.1.1 | **Create Tiff** |  | 5d | 2020-04-23 | 2020-04-29 |  |  |  | 0d | Tor | 64h |  |  |
| 172 | 5.5.1.1.1 | Read from Upload Folder (155) | manual | 1d | 2020-04-23 | 2020-04-23 |  |  |  |  | Tor | 8h |  | TD-017 |
| 173 | 5.5.1.1.2 | Covert to Tiff | manual | 1d | 2020-04-29 | 2020-04-29 |  |  |  |  | Tor | 8h |  | TD-018 |
| 174 | 5.5.1.1.3 | Return Tiff to Viewer page(156) | manual | 1d | 2020-04-29 | 2020-04-29 |  |  |  |  | Tor | 8h |  | TD-019 |
| 175 | 5.5.1.2 | **Process FS Range Selected** |  | 2d | 2020-04-30 | 2020-05-01 |  |  |  |  | Tor | 48h |  |  |
| 176 | 5.5.1.2.1 | OCR FS | manual | 2d | 2020-04-30 | 2020-05-01 |  |  |  |  | Tor | 16h |  | TD-020 |
| 177 | 5.5.1.2.2 | Return Output For Editing Page | manual | 2d | 2020-04-30 | 2020-05-01 |  |  |  |  | Tor | 16h |  | TD-021 |
| 178 | 6 | **Development and Unit test** |  | 79d? | 2020-05-05 A | 2020-08-21 |  | 66% | 26.83d? | 0d |  | 3528.89h | 1863.17h |  |
| 180 | 6.1 | **Scorelink** |  | 74d | 2020-05-05 A | 2020-08-14 |  | 67% | 24.08d | 0d |  | 3528.89h | 1863.17h |  |
| 181 | 6.1.1 | **Upload PDF file Page** |  | 4d | 2020-05-05 A | 2020-05-08 A |  | 100% |  |  | Eak | 32h | 32h |  |
| 182 | 6.1.1.1 | Insert Data to DB | manual | 1d | 2020-05-05 A | 2020-05-05 A |  | 100% |  |  |  |  |  |  |
| 183 | 6.1.1.2 | Upload PDF file | manual | 1d | 2020-05-06 A | 2020-05-06 A |  | 100% |  |  |  |  |  |  |
| 184 | 6.1.1.3 | Delete Data from DB and Delete File | manual | 2d | 2020-05-07 A | 2020-05-08 A |  | 100% |  |  |  |  |  |  |
| 185 | 6.1.1.4 | Convert PDF TO Tiff (Backend) | manual | 1d | 2020-05-05 A | 2020-05-05 A |  | 100% |  |  |  |  |  |  |
| 186 | 6.1.2 | **Preview Page and select page (Leadtools)** |  | 26d | 2020-05-13 A | 2020-06-17 |  | 99% | 0d | 0d | Rut | 624h | 448h |  |
| 187 | 6.1.2.1 | Page Preview (Original PDF) | manual | 8d | 2020-05-13 A | 2020-05-22 A |  | 100% |  |  | Eak; Rut | 128h | 128h |  |
| 188 | 6.1.2.2 | Select Page (Single) | manual | 4d | 2020-05-28 A | 2020-06-02 A |  | 100% |  |  | Eak; Rut | 64h | 64h |  |
| 189 | 6.1.2.3 | List Page by Financial Type | manual | 1d | 2020-06-04 A | 2020-06-04 A |  | 100% |  |  | Rut | 8h | 8h |  |
| 190 | 6.1.2.4 | Delete Select Page From List | manual | 1d | 2020-06-08 A | 2020-06-08 A |  | 100% |  |  | Rut | 8h | 8h |  |
| 191 | 6.1.2.5 | View Image -> GetImageByURL (Backend) | manual | 24d | 2020-05-13 A | 2020-06-15 A |  | 100% |  |  | Rut | 192h | 192h |  |
| 192 | 6.1.2.6 | CreateMultiTiff From Selected Page (Backend) | manual | 2d | 2020-06-16 A | 2020-06-17 A |  | 100% |  |  | Eak | 16h | 16h |  |
| 193 | 6.1.3 | **Select Pattern for Scan Page** |  | 25d | 2020-06-18 A | 2020-07-22 |  | 99% | 0d | 0d | Eak | 352h | 204.8h |  |
| 194 | 6.1.3.1 | Show Select Page (TIFF) | manual | 3d | 2020-06-18 A | 2020-06-22 A | 192 | 100% |  |  | Eak | 24h | 24h |  |
| 195 | 6.1.3.2 | Save Select Pattern | manual | 2d | 2020-06-18 A | 2020-06-19 A |  | 100% |  |  | Eak | 16h | 16h |  |
| 196 | 6.1.3.3 | View Image -> GetImageByURL Only Selected Page (Backend) | manual | 2d | 2020-06-22 A | 2020-06-23 A | 191 | 100% |  |  | Rut | 16h | 16h |  |
| 197 | 6.1.3.4 | Prepare OCR Parameter (Path,Pattern,AccProhibit,Amount - Backend) | manual | 2d | 2020-06-23 A | 2020-06-24 A |  | 100% |  |  | Eak | 16h | 16h |  |

| ID | WBS | Task | Type | Duration | Start | Finish | Predecessors | Complete | Remaining | Constraint | Resources | Work | Actual work | Comment |
| --- | --- | --- | --- | --- | --- | --- | --- | --- | --- | --- | --- | --- | --- | --- |
| 198 | 6.1.3.5 | **Create Abby fucntion for OCR** |  | 5d | 2020-07-16 A | 2020-07-22 A |  | 100% |  |  | Eak | 80h | 80h |  |
| 199 | 6.1.3.5.1 | Load and Setting ABBY OCR | manual | 5d | 2020-07-16 A | 2020-07-22 A |  | 100% |  |  | Eak | 40h | 40h |  |
| 200 | 6.1.4 | **Select Scan Area (OCR) Page** |  | 49d | 2020-05-26 A | 2020-07-31 |  | 99% | 0d |  | Eak | 464.89h | 240.57h |  |
| 201 | 6.1.4.1 | Preview Page | manual | 1d | 2020-05-26 A | 2020-05-26 A |  | 100% |  |  | Eak | 8h | 8h |  |
| 202 | 6.1.4.2 | Select Area | manual | 2d | 2020-07-23 A | 2020-07-24 A |  | 100% |  |  | Eak | 16h | 16h |  |
| 203 | 6.1.4.3 | Save Scanned Area | manual | 3d | 2020-07-13 A | 2020-07-15 A |  | 100% |  |  | Eak | 24h | 24h |  |
| 204 | 6.1.4.4 | Send data for OCR |  | 5d | 2020-07-22 A | 2020-07-31 A | 198 | 100% |  | finish no earlier than 2020-07-31 | Eak | 8.89h | 8.89h | Load ABBY DIC and Call OCR |
| 205 | 6.1.4.5 | View Image -> GetImageByURL Only Selected Page (BACKEND) |  | 2d | 2020-06-22 A | 2020-06-24 A | 196 | 100% |  | finish no earlier than 2020-06-23 | Rut | 16h | 16h |  |
| 206 | 6.1.5 | **Scan Results Mapping Page** |  | 35d | 2020-06-18 A | 2020-08-05 |  | 59% | 14.36d |  | Rut | 2024h | 933.8h |  |
| 207 | 6.1.5.1 | Screen view and ocr result | manual | 2d | 2020-06-18 A | 2020-06-19 A |  | 100% |  |  | Rut | 16h | 16h |  |
| 208 | 6.1.5.2 | **Spread Sheet Configuration by Category** |  | 29d | 2020-06-19 A | 2020-07-29 |  | 85% | 4.29d |  | Rut | 1304h | 916.8h |  |
| 209 | 6.1.5.2.1 | Highlight Text | manual | 29d | 2020-06-19 A | 2020-07-29 |  | 90% | 2.9d |  | Rut | 232h | 208.8h |  |
| 210 | 6.1.5.2.2 | Merge Row | manual | 29d | 2020-06-19 A | 2020-07-29 |  | 90% | 2.9d |  | Rut | 232h | 208.8h |  |
| 211 | 6.1.5.2.3 | Insert Row | manual | 24d | 2020-06-19 A | 2020-07-22 A |  | 100% |  |  | Rut | 192h | 192h |  |
| 212 | 6.1.5.2.4 | Delete Row | manual | 24d | 2020-06-19 A | 2020-07-22 A |  | 100% |  |  | Rut | 192h | 192h |  |
| 213 | 6.1.5.2.5 | Edit Value | manual | 28d | 2020-06-22 A | 2020-07-29 |  | 50% | 14d |  | Rut | 224h | 112h |  |
| 214 | 6.1.5.3 | Prepare suggest word logic (Combobox) | manual | 29d | 2020-06-23 | 2020-07-31 |  |  |  |  | Rut | 232h |  |  |
| 215 | 6.1.5.4 | CheckAmount | manual | 28d | 2020-06-24 | 2020-07-31 |  |  |  |  | Rut | 224h |  |  |
| 216 | 6.1.5.5 | Convert OCR Result (Mapping Dic) | manual | 3d | 2020-08-03 | 2020-08-05 |  |  |  |  | Rut | 24h |  |  |
| 217 | 6.1.5.6 | Export Excel File | manual | 1d | 2020-08-05 A | 2020-08-05 |  |  | 1d |  | Rut | 8h |  |  |
| 218 | 6.1.6 | **See results and Edit Page** |  | 2d | 2020-08-06 A | 2020-08-07 |  |  | 2d |  | Rut | 32h | 4h |  |
| 219 | 6.1.6.1 | Check Amount And Mapping Account Title | manual | 2d | 2020-08-06 A | 2020-08-07 | 217 |  | 2d |  | Rut | 16h |  |  |
| 220 | 6.1.7 | **Authentication** |  | 5d | 2020-08-10 | 2020-08-14 |  |  |  |  |  |  |  |  |
| 221 | 6.1.7.1 | Design | manual | 1d | 2020-08-10 | 2020-08-10 |  |  |  |  |  |  |  |  |
| 222 | 6.1.7.2 | Check Concurrent | manual | 2d | 2020-08-10 | 2020-08-11 |  |  |  |  |  |  |  |  |
| 223 | 6.1.7.3 | Login Page | manual | 2d | 2020-08-11 | 2020-08-12 |  |  |  |  |  |  |  |  |
| 224 | 6.1.7.4 | Forgot Password | manual | 3d | 2020-08-12 | 2020-08-14 |  |  |  |  |  |  |  |  |
| 225 | 6.2 | Log and audit trail | manual | 5d | 2020-08-17 | 2020-08-21 |  |  |  |  |  |  |  |  |

| ID | WBS | Task | Type | Duration | Start | Finish |
| --- | --- | --- | --- | --- | --- | --- |
| 226 | 7 | **Test** |  | 5d | 2020-08-24 | 2020-08-28 |
| 227 | 7.1 | Integration Test | manual | 3d | 2020-08-24 | 2020-08-26 |
| 228 | 7.2 | Load Test | manual | 2d | 2020-08-26 | 2020-08-27 |
| 229 | 7.3 | Security Test | manual | 2d | 2020-08-27 | 2020-08-28 |
| 230 | 8 | **Deployment** |  | 4d | 2020-08-31 | 2020-09-03 |
| 231 | 8.1 | Prepare prod env. | manual | 1d | 2020-09-03 | 2020-09-03 |
| 232 | 8.2 | Deployment | manual | 1d | 2020-09-03 | 2020-09-03 |
| 233 | 9 | Go Live | manual | 1d | 2020-09-04 | 2020-09-04 |
